How a schedule from MS Project changed from version to version. A marks actual dates.

## Version 1 (saved 2025-10-18)

Note of the change: Carta Gantt del Proyecto

| ID | WBS | Task | Duration | Start | Finish | Predecessors | Complete | Total float | Constraint |
| --- | --- | --- | --- | --- | --- | --- | --- | --- | --- |
| 1 | 1 | **Proyecto Sistema FoodTruck** | 81.12d? | 2025-08-18 A | 2025-12-12 |  | 36% | 0d |  |
| 2 | 1.1 | **Levantamiento de requerimientos y planificación macro** | 14.9d | 2025-08-18 A | 2025-09-05 |  | 89% | 0.07d |  |
| 3 |  | Recopilar requerimientos funcionales y no funcionales | 27h | 2025-08-18 A | 2025-08-21 A |  | 100% |  |  |
| 4 |  | Definir backlog inicial en Azure DevOps | 18h | 2025-08-25 A | 2025-08-27 A | 3 | 100% |  |  |
| 5 |  | Planificación macro del proyecto | 23.4h | 2025-08-28 A | 2025-09-05 | 4 | 69% | 0.07d |  |
| 6 | 1.2 | **Análisis y diseño de base de datos + Diagramas** | 8d | 2025-09-01 A | 2025-09-11 |  | 88% | 62.88d |  |
| 7 |  | Análisis de entidades | 24h | 2025-09-01 A | 2025-09-08 | 5 | 67% | 61.9d |  |
| 8 |  | Diseño de diagramas ER y UML | 18h | 2025-09-03 A | 2025-09-05 A | 7 | 100% |  |  |
| 9 |  | Configuración inicial de Azure SQL Server | 24h | 2025-09-08 A | 2025-09-11 A | 8 | 100% |  |  |
| 10 | 1.3 | **SPRINT 1: Infraestructura & Backend Core** | 13.5d | 2025-09-11 A | 2025-10-02 |  | 72% | 49.38d |  |
| 11 | 1.3.1 | **Configuración de Entornos y Arquitectura Inicial** | 4.25d | 2025-09-11 A | 2025-09-17 |  | 79% | 58.62d |  |
| 12 |  | Setup de entorno Django y Azure | 12h | 2025-09-11 A | 2025-09-12 | 9 | 58% | 2.5d |  |
| 13 |  | Desarrollo de modelos de datos | 18h | 2025-09-15 A | 2025-09-17 | 12 | 89% | 55.38d |  |
| 14 |  | Instalación prerrequisitos, vs code, node.js | 3h | 2025-09-11 A | 2025-09-11 A | 13 | 100% |  |  |
| 15 |  | Instalación vite, react, tailwindcss, depedencias | 1h | 2025-09-11 A | 2025-09-11 A | 14 | 100% |  |  |
| 16 |  | Configurar vs code y extensiones | 1h | 2025-09-11 A | 2025-09-11 A | 15 | 100% |  |  |
| 17 |  | Implementación de APIs básicas para Login usuarios | 8h | 2025-09-17 A | 2025-09-22 A | 16 | 100% |  |  |
| 18 |  | CRUD gestión de pedidos | 28.8h | 2025-09-24 A | 2025-09-29 | 17 | 90% | 0.9d |  |
| 19 |  | Pruebas unitarias iniciales | 20h | 2025-09-30 A | 2025-10-02 | 18 | 20% | 0d |  |
| 20 | 1.4 | **SPRINT 2: Frontend Core & PWA** | 14d | 2025-10-02 A | 2025-10-21 |  | 39% | 0d |  |
| 21 |  | Arquitectura Frontend y Enrutamiento | 1.75d | 2025-10-02 A | 2025-10-03 | 19 | 43% | 0.62d |  |
| 22 |  | Desarrollo Módulo de Autenticación | 2d | 2025-10-03 A | 2025-10-06 | 21 | 69% | 3.38d |  |
| 23 |  | Desarrollo Dashboard Vendedor y Catálogo | 4d | 2025-10-10 A | 2025-10-15 | 22 | 9% | 0.4d |  |
| 24 |  | Desarrollo Módulo Toma de Pedidos | 2d | 2025-10-09 A | 2025-10-16 | 23 | 70% | 0.4d |  |
| 25 |  | Pruebas de usabilidad | 16h | 2025-10-10 A | 2025-10-17 | 24 | 70% | 0d | finish no earlier than 2025-10-14 |
| 26 |  | Sprint review y refinamiento | 2d | 2025-10-20 | 2025-10-21 | 25 |  | 0d |  |
| 27 | 1.5 | **SPRINT 3: Integración & Sincronización** | 19.12d? | 2025-10-22 | 2025-11-18 |  |  | 0d |  |
| 28 |  | Setup de PWA manifest | 1d? | 2025-10-22 | 2025-10-22 | 26 |  | 0d |  |
| 29 |  | Implementación de modo offline | 1d? | 2025-10-23 | 2025-10-23 | 28 |  | 0d |  |
| 30 |  | Integración frontend-backend via APIs | 10.62d | 2025-10-24 | 2025-11-07 | 29 |  | 0d |  |
| 31 |  | Desarrollo de sincronización offline-online | 2d | 2025-11-07 | 2025-11-11 | 30 |  | 0d |  |
| 32 |  | Integración con POS simulado | 2d | 2025-11-11 | 2025-11-13 | 31 |  | 0d |  |
| 33 |  | Manejo de roles multiusuario | 2d | 2025-11-13 | 2025-11-17 | 32 |  | 0d |  |
| 34 |  | Pruebas integradas y de seguridad | 0.5d | 2025-11-17 | 2025-11-18 | 33 |  | 0d |  |
| 35 | 1.6 | **SPRINT 4: Funcionalidades Avanzadas & Optimización** | 7d | 2025-11-18 | 2025-11-27 |  |  | 0d |  |
| 36 |  | Implementación de reportes financieros y historial | 2d | 2025-11-18 | 2025-11-20 | 34 |  | 0d |  |
| 37 |  | Optimización de rendimiento (e.g., índices en BD) | 2d | 2025-11-20 | 2025-11-24 | 36 |  | 0d |  |
| 38 |  | Funcionalidades multisucursal | 2d | 2025-11-24 | 2025-11-26 | 37 |  | 0d |  |
| 39 |  | Pruebas de escalabilidad | 0.5d | 2025-11-26 | 2025-11-26 | 38 |  | 0d |  |
| 40 |  | Sprint review final | 0.5d | 2025-11-26 | 2025-11-27 | 39 |  | 0d |  |
| 41 | 1.7 | **UAT y Despliegue** | 3d | 2025-11-27 | 2025-12-02 |  |  | 0d |  |
| 42 |  | User Acceptance Testing (UAT) con escenarios reales | 2d | 2025-11-27 | 2025-12-01 | 40 |  | 0d |  |
| 43 |  | Despliegue en Azure App Service y Static Web Apps | 1d | 2025-12-01 | 2025-12-02 | 42 |  | 0d |  |
| 44 | 1.8 | **Documentación Final** | 5d | 2025-12-02 | 2025-12-10 |  |  | 0d |  |
| 45 |  | Redacción de documentos de planificación y control | 3d | 2025-12-02 | 2025-12-05 | 43 |  | 0d |  |
| 46 |  | Actualización de diagramas de arquitectura y BD | 1d | 2025-12-05 | 2025-12-09 | 45 |  | 0d |  |
| 47 |  | Reportes de pruebas | 1d | 2025-12-09 | 2025-12-10 | 46 |  | 0d |  |
| 48 | 1.9 | **Entrega y Presentación** | 2d | 2025-12-10 | 2025-12-12 |  |  | 0d |  |
| 49 |  | Preparación de demo funcional | 1d | 2025-12-10 | 2025-12-11 | 47 |  | 0d |  |
| 50 |  | Creación de presentación Capstone | 1d | 2025-12-11 | 2025-12-12 | 49 |  | 0d |  |
| 51 |  | Entrega final al docente | 0d | 2025-12-12 | 2025-12-12 | 50 |  | 0d |  |

## Version 2 (saved 2025-11-22)

Note of the change: Versión actualizada

Last finish 2025-12-12 → 2025-12-05 (-7d). Complete tasks 8 → 37.

Added:

| ID | Task | Duration | Start | Finish | Predecessors | Constraint | Resources |
| --- | --- | --- | --- | --- | --- | --- | --- |
| 2 | **Fase 1: Inicio y Planificación** | 6d | 2025-08-18 A | 2025-08-25 |  |  |  |
| 7 | Hito 1: Fin Levantamiento y Requerimientos | 0d | 2025-08-29 A | 2025-08-29 A | 6 |  |  |
| 8 | **Fase 2: Análisis y Diseño** | 9d | 2025-08-30 A | 2025-09-10 |  |  |  |
| 13 | Hito 2: Fin Análisis y Diseño | 0d | 2025-09-04 A | 2025-09-04 A |  |  |  |
| 14 | **Fase 3: Desarrollo (Ágil)** | 24.5d | 2025-09-05 A | 2025-10-09 |  |  |  |
| 20 | Instalación vite, react, tailwindcss, dependencias | 1d | 2025-09-23 A | 2025-09-25 A |  |  | Gustavo Pezzini [25%] |
| 29 | Pruebas validaciones | 16h | 2025-10-20 A | 2025-10-21 A | 28 |  | René Veloso [25%] |
| 33 | Integración frontend-backend vía APIs | 2.69d | 2025-10-29 A | 2025-10-31 A | 32 |  | Gustavo Pezzini [25%]; Vicente Galvez [25%] |
| 37 | Pruebas y validaciones | 0d | 2025-11-17 A | 2025-11-17 A |  |  | René Veloso |
| 40 | Funcionalidad Apertura y Cierre de Caja | 0.25d | 2025-11-20 A | 2025-11-20 A |  |  | Gustavo Pezzini; Vicente Galvez |
| 42 | Pruebas y validaciones | 3h | 2025-11-22 A | 2025-11-22 A |  |  | René Veloso |
| 43 | Hito 3: Fin Desarrollo | 0d | 2025-11-22 A | 2025-11-22 A |  |  |  |
| 44 | **Fase 4: Pruebas y Validaciones** | 2d | 2025-11-20 A | 2025-11-21 A |  |  |  |
| 46 | Pruebas de Aceptación (UAT) | 2d | 2025-11-20 A | 2025-11-21 A |  |  | René Veloso [25%] |
| 48 | Hito 4: Fin Pruebas | 0d | 2025-11-21 A | 2025-11-21 A | 47 |  |  |
| 49 | **Fase 5: Cierre** | 15.5d | 2025-11-15 A | 2025-12-05 |  |  |  |
| 51 | Informe de proyecto | 10d | 2025-11-15 A | 2025-11-27 A |  | start no earlier than 2025-11-15 | René Veloso |
| 53 | Presentación | 1d | 2025-11-26 A | 2025-11-28 A | 51 |  | René Veloso |
| 55 | Presentación ante comisión | 0.5d | 2025-12-05 | 2025-12-05 |  | start no earlier than 2025-12-05 | Gustavo Pezzini; René Veloso; Vicente Galvez |
| 56 | Hito 5: Fin Cierre | 0d | 2025-12-05 | 2025-12-05 |  | start no earlier than 2025-12-05 |  |

Removed: 15 Instalación vite, react, tailwindcss, depedencias; 25 Pruebas de usabilidad; 26 Sprint review y refinamiento; 30 Integración frontend-backend via APIs; 34 Pruebas integradas y de seguridad; 37 Optimización de rendimiento (e.g., índices en BD); 39 Pruebas de escalabilidad; 40 Sprint review final; 42 User Acceptance Testing (UAT) con escenarios reales; 45 Redacción de documentos de planificación y control; 46 Actualización de diagramas de arquitectura y BD; 47 Reportes de pruebas; 49 Preparación de demo funcional; 50 Creación de presentación Capstone; 51 Entrega final al docente

Changed:

| ID | Task | Start | Finish | Duration | Complete | Total float | Predecessors | Other |
| --- | --- | --- | --- | --- | --- | --- | --- | --- |
| 1 | **Proyecto Sistema FoodTruck** |  | 2025-12-12 → 2025-12-05 (-7d) | 81.12d? → 80.5d | 36% → 99% |  |  |  |
| 3 | **Levantamiento de requerimientos y planificación macro** |  | 2025-09-05 → 2025-08-25 A (-11d) | 14.9d → 6d | 89% → 100% | 0.07d → none |  |  |
| 4 | Recopilar requerimientos funcionales y no funcionales |  | 2025-08-21 A → 2025-08-19 A (-2d) | 27h → 2d |  |  |  |  |
| 5 | Definir backlog inicial en Azure DevOps | 2025-08-25 A → 2025-08-20 A (-5d) | 2025-08-27 A → 2025-08-21 A (-6d) | 18h → 2d |  |  |  |  |
| 6 | Planificación macro del proyecto | 2025-08-28 A → 2025-08-22 A (-6d) | 2025-09-05 → 2025-08-25 A (-11d) | 23.4h → 2d | 69% → 100% | 0.07d → none |  |  |
| 9 | **Análisis y diseño de base de datos + Diagramas** | 2025-09-01 A → 2025-08-30 A (-2d) | 2025-09-11 → 2025-09-10 (-1d) | 8d → 9d | 88% → 100% | 62.88d → none |  |  |
| 10 | Análisis de entidades | 2025-09-01 A → 2025-08-30 A (-2d) | 2025-09-08 → 2025-09-01 A (-7d) | 24h → 2d | 67% → 100% | 61.9d → none | 6 → none |  |
| 11 | Diseño de diagramas ER y UML | 2025-09-03 A → 2025-09-02 A (-1d) |  | 18h → 4d |  |  |  |  |
| 12 | Configuración inicial de Azure SQL Server | 2025-09-08 A → 2025-08-30 A (-9d) | 2025-09-11 A → 2025-09-03 A (-8d) | 24h → 3d |  |  | 11 → none |  |
| 15 | **SPRINT 1: Infraestructura & Backend Core** | 2025-09-11 A → 2025-09-05 A (-6d) | 2025-10-02 → 2025-10-09 (+7d) | 13.5d → 24.5d | 72% → 100% | 49.38d → none |  |  |
| 16 | **Configuración de Entornos y Arquitectura Inicial** | 2025-09-11 A → 2025-09-05 A (-6d) | 2025-09-17 → 2025-09-23 (+6d) | 4.25d → 13d | 79% → 100% | 58.62d → none |  |  |
| 17 | Setup de entorno Django y Azure | 2025-09-11 A → 2025-09-05 A (-6d) | 2025-09-12 → 2025-09-11 A (-1d) | 12h → 4.5d | 58% → 100% | 2.5d → none | 12 → none |  |
| 18 | Desarrollo de modelos de datos | 2025-09-15 A → 2025-09-11 A (-4d) | 2025-09-17 → 2025-09-19 A (+2d) | 18h → 6d | 89% → 100% | 55.38d → none | 17 → none |  |
| 19 | Instalación prerrequisitos, vs code, node.js | 2025-09-11 A → 2025-09-19 A (+8d) | 2025-09-11 A → 2025-09-22 A (+11d) | 3h → 1.5d |  |  | 18 → none |  |
| 21 | Configurar vs code y extensiones | 2025-09-11 A → 2025-09-26 A (+15d) | 2025-09-11 A → 2025-09-26 A (+15d) | 1h → 0.88d |  |  | Instalación vite, react, tailwindcss, depedencias → none |  |
| 22 | Implementación de APIs básicas para Login usuarios | 2025-09-17 A → 2025-09-28 A (+11d) | 2025-09-22 A → 2025-10-03 A (+11d) | 8h → 5d |  |  | 21 → none |  |
| 23 | CRUD gestión de pedidos | 2025-09-24 A → 2025-10-04 A (+10d) | 2025-09-29 → 2025-10-10 A (+11d) | 28.8h → 5d | 90% → 100% | 0.9d → none | 22 → none |  |
| 24 | **SPRINT 2: Frontend Core & PWA** | 2025-10-02 A → 2025-09-23 A (-9d) | 2025-10-21 → 2025-10-10 (-11d) | 14d → 13.6d | 39% → 100% | 0d → none |  |  |
| 25 | Arquitectura Frontend y Enrutamiento | 2025-10-02 A → 2025-09-23 A (-9d) | 2025-10-03 → 2025-09-30 A (-3d) | 1.75d → 6d | 43% → 100% | 0.62d → none | 52 → none |  |
| 26 | Desarrollo Módulo de Autenticación |  | 2025-10-06 A | 2d → 1.5d | 69% → 100% | 3.38d → none |  | resources Gustavo Pezzini [25%] → Gustavo Pezzini [25%]; Vicente Galvez [25%] |
| 27 | Desarrollo Dashboard Vendedor y Catálogo |  | 2025-10-15 → 2025-10-13 A (-2d) | 4d → 2d | 9% → 100% | 0.4d → none |  | resources Gustavo Pezzini [25%] → Gustavo Pezzini [25%]; Vicente Galvez [25%] |
| 28 | Desarrollo Módulo Toma de Pedidos |  | 2025-10-16 → 2025-10-10 A (-6d) | 2d → 1.85d | 70% → 100% | 0.4d → none |  | resources Gustavo Pezzini [25%] → Gustavo Pezzini [25%]; Vicente Galvez [25%] |
| 30 | **SPRINT 3: Integración & Sincronización** | 2025-10-22 → 2025-10-24 A (+2d) | 2025-11-18 A | 19.12d? → 18.7d | 0% → 100% | 0d → none |  |  |
| 31 | Setup de PWA manifest | 2025-10-22 → 2025-10-24 A (+2d) | 2025-10-22 → 2025-10-24 A (+2d) | 1d? → 1d | 0% → 100% | 0d → none | Sprint review y refinamiento → none | resources none → Gustavo Pezzini [25%] |
| 32 | Implementación de modo offline | 2025-10-23 → 2025-10-27 A (+4d) | 2025-10-23 → 2025-10-28 A (+5d) | 1d? → 2d | 0% → 100% | 0d → none |  | resources none → Gustavo Pezzini [25%] |
| 34 | Desarrollo de sincronización offline-online | 2025-11-07 → 2025-11-01 A (-6d) | 2025-11-11 → 2025-11-06 A (-5d) | 2d → 4d | 0% → 100% | 0d → none | Integración frontend-backend via APIs → 33 | resources none → Gustavo Pezzini [25%] |
| 35 | Integración con POS simulado | 2025-11-11 → 2025-11-07 A (-4d) | 2025-11-13 A | 2d → 5d | 0% → 100% | 0d → none |  | resources none → Gustavo Pezzini [25%]; Vicente Galvez [25%] |
| 36 | Manejo de roles multiusuario | 2025-11-13 → 2025-11-14 A (+1d) | 2025-11-17 → 2025-11-18 A (+1d) | 2d → 2.7d | 0% → 100% | 0d → none |  | resources none → Gustavo Pezzini [33%]; Vicente Galvez [33%] |
| 38 | **SPRINT 4: Funcionalidades Avanzadas & Optimización** | 2025-11-18 A | 2025-11-27 → 2025-11-24 (-3d) | 7d → 5d | 0% → 100% | 0d → none |  |  |
| 39 | Implementación de reportes financieros y historial | 2025-11-18 A | 2025-11-20 → 2025-11-18 A (-2d) | 2d → 0.5d | 0% → 100% | 0d → none | Pruebas integradas y de seguridad → none | resources none → Gustavo Pezzini; Vicente Galvez |
| 41 | Funcionalidades multisucursal | 2025-11-24 → 2025-11-21 A (-3d) | 2025-11-26 → 2025-11-21 A (-5d) | 2d → 0.5d | 0% → 100% | 0d → none | Optimización de rendimiento (e.g., índices en BD) → none | resources none → Vicente Galvez; Gustavo Pezzini |
| 45 | **UAT y Despliegue** | 2025-11-27 → 2025-11-20 A (-7d) | 2025-12-02 → 2025-11-21 A (-11d) | 3d → 2d | 0% → 100% | 0d → none |  |  |
| 47 | Despliegue en Azure App Service y Static Web Apps | 2025-12-01 → 2025-11-21 A (-10d) | 2025-12-02 → 2025-11-21 A (-11d) |  | 0% → 100% | 0d → none | User Acceptance Testing (UAT) con escenarios reales → none | constraint none → start no earlier than 2025-11-21; resources none → Vicente Galvez |
| 50 | **Documentación Final** | 2025-12-02 → 2025-11-15 A (-17d) | 2025-12-10 → 2025-11-28 (-12d) | 5d → 10.9d | 0% → 96% |  |  |  |
| 52 | Preparación video de demo funcional | 2025-09-30 A → 2025-11-25 (+56d) | 2025-10-02 → 2025-11-25 (+54d) | 20h → 0.5d | 20% → 0% | 0d → none | 23 → none | was named Pruebas unitarias iniciales; resources Gustavo Pezzini [25%]; René Veloso [25%]; Vicente Galvez [25%] → Gustavo Pezzini |
| 54 | **Entrega y Presentación** | 2025-12-10 → 2025-12-03 (-7d) | 2025-12-12 → 2025-12-04 (-8d) | 2d → 1.5d |  | 0d → none |  |  |
